# Sistema de seguimiento y fidelización de tratamientos

Schedule from GanttProject, 2026-10-19 to 2026-12-18.
ARM Systems
Cronograma del proyecto. Cliente: Centro Médico Vida Norte SpA. Línea base del 3 de noviembre de 2026. Tarifa de referencia: $15.000 por hora (neto).

## Calendars

- Project calendar: Mon-Fri working; Sat-Sun off. Exceptions (off unless hours are given): 2026-12-08.

## Resources

| Resource | Group | Rate |
| --- | --- | --- |
| Fabián Moore | Líder de proyecto y diseñador frontend | 120000 |
| Mauricio Aliaga | Programador backend | 120000 |
| Nicolás González | Ingeniero en sistemas | 120000 |
| Lukas Rozas | Tester y validador del sistema | 120000 |

## Schedule

| ID | WBS | Task | Type | Duration | Start | Finish | Predecessors | Complete | Resources | Is done |
| --- | --- | --- | --- | --- | --- | --- | --- | --- | --- | --- |
| 1 | 1 | Hito 0. Inicio del proyecto | milestone | 0d | 2026-10-19 | 2026-10-19 |  |  |  | false |
| 2 | 2 | **1 Gestión del proyecto** |  | 44d | 2026-10-19 | 2026-12-18 |  |  |  | false |
| 3 | 2.1 | 1.1 Documentación de gestión (caso de negocio, planes, acta) |  | 15d | 2026-10-19 | 2026-11-06 |  |  | Fabián Moore [15%]; Nicolás González [5%]; Lukas Rozas [5%] | false |
| 4 | 2.2 | 1.2 Reuniones y seguimiento con el cliente |  | 44d | 2026-10-19 | 2026-12-18 |  |  | Fabián Moore [3.98%]; Mauricio Aliaga [1.7%]; Nicolás González [2.84%]; Lukas Rozas [2.84%] | false |
| 5 | 3 | **2 Análisis y diseño** |  | 12d | 2026-10-19 | 2026-11-03 |  | 100% |  | true |
| 6 | 3.1 | 2.1 Levantamiento y especificación de requisitos |  | 5d | 2026-10-19 | 2026-10-23 |  | 100% | Nicolás González [20%]; Fabián Moore [10%]; Lukas Rozas [35%]; Mauricio Aliaga [5%] | true |
| 7 | 3.2 | 2.2 Modelo de datos y arquitectura |  | 7d | 2026-10-21 | 2026-10-29 | 6SS+2d | 100% | Nicolás González [39.29%]; Mauricio Aliaga [14.29%] | true |
| 8 | 3.3 | 2.3 Prototipo y diseño de interfaz |  | 11d | 2026-10-20 | 2026-11-03 | 6SS+1d | 100% | Fabián Moore [30.68%]; Lukas Rozas [10.23%] | true |
| 9 | 4 | **3 Desarrollo** |  | 30d | 2026-10-26 | 2026-12-04 |  | 29% |  | false |
| 10 | 4.1 | **3.1 Base de datos y servicios (backend)** |  | 15d | 2026-10-26 | 2026-11-13 |  | 58% |  | false |
| 11 | 4.1.1 | 3.1.1 Esquema de base de datos, migraciones y API base |  | 10d | 2026-10-26 | 2026-11-06 | 7SS+3d | 100% | Mauricio Aliaga [27.5%] | true |
| 12 | 4.1.2 | 3.1.2 Servicios y validaciones del backend |  | 5d | 2026-11-09 | 2026-11-13 | 11 |  | Mauricio Aliaga [22.5%]; Nicolás González [17.5%] | false |
| 13 | 4.2 | 3.2 Módulo de reservas |  | 10d | 2026-11-09 | 2026-11-20 | 8FS+3d, 11 |  | Mauricio Aliaga [17.5%]; Fabián Moore [13.75%]; Lukas Rozas [13.75%] | false |
| 14 | 4.3 | **3.3 Formulario estandarizado y seguimiento post atención** |  | 22d | 2026-10-29 | 2026-11-27 |  | 28% |  | false |
| 15 | 4.3.1 | 3.3.1 Formulario estandarizado de contacto |  | 10d | 2026-11-09 | 2026-11-20 | 11 |  | Mauricio Aliaga [10%]; Fabián Moore [12.5%]; Lukas Rozas [2.5%] | false |
| 16 | 4.3.2 | 3.3.2 Recomendaciones del médico al paciente |  | 7d | 2026-10-29 | 2026-11-06 | 11SS+3d | 100% | Mauricio Aliaga [12.5%]; Fabián Moore [7.14%]; Lukas Rozas [8.93%] | true |
| 17 | 4.3.3 | 3.3.3 Recordatorios y estado del hilo de seguimiento |  | 9d | 2026-11-17 | 2026-11-27 | 12FS+1d, 16FS+6d |  | Mauricio Aliaga [12.5%]; Fabián Moore [12.5%]; Lukas Rozas [5.56%] | false |
| 18 | 4.4 | **3.4 Seguridad, perfiles, historial de accesos y Clave Única simulada** |  | 23d | 2026-10-28 | 2026-11-27 |  | 40% |  | false |
| 19 | 4.4.1 | 3.4.1 Perfiles por rol y acceso con RUT |  | 8d | 2026-10-28 | 2026-11-06 | 11SS+2d | 100% | Nicolás González [21.88%]; Lukas Rozas [9.38%] | true |
| 20 | 4.4.2 | 3.4.2 Historial de accesos |  | 10d | 2026-11-09 | 2026-11-20 | 19 |  | Nicolás González [20%] | false |
| 21 | 4.4.3 | 3.4.3 Clave Única simulada |  | 5d | 2026-11-23 | 2026-11-27 | 20 |  | Nicolás González [20%]; Fabián Moore [10%]; Lukas Rozas [5%] | false |
| 22 | 4.5 | **3.5 Dashboard de continuidad** |  | 25d | 2026-11-02 | 2026-12-04 |  | 31% |  | false |
| 23 | 4.5.1 | 3.5.1 Resumen del doctor con datos reales |  | 5d | 2026-11-02 | 2026-11-06 | 8SS+9d, 16SS+2d | 100% | Fabián Moore [12.5%]; Mauricio Aliaga [5%]; Lukas Rozas [7.5%] | true |
| 24 | 4.5.2 | 3.5.2 Filtros y reportes de continuidad |  | 10d | 2026-11-23 | 2026-12-04 | 17SS+4d, 23FS+10d |  | Fabián Moore [12.5%]; Mauricio Aliaga [7.5%]; Lukas Rozas [7.5%] | false |
| 25 | 4.6 | 3.6 Notificaciones (WhatsApp y correo) |  | 9d | 2026-11-17 | 2026-11-27 | 12FS+1d |  | Mauricio Aliaga [11.11%]; Nicolás González [8.33%]; Lukas Rozas [8.33%] | false |

| ID | WBS | Task | Type | Duration | Start | Finish | Predecessors | Resources | Is done |
| --- | --- | --- | --- | --- | --- | --- | --- | --- | --- |
| 26 | 5 | **4 Pruebas** |  | 32d | 2026-11-02 | 2026-12-16 |  |  | false |
| 27 | 5.1 | 4.1 Plan y casos de prueba |  | 10d | 2026-11-02 | 2026-11-13 | 8SS+9d | Lukas Rozas [10%]; Nicolás González [7.5%] | false |
| 28 | 5.2 | 4.2 Ejecución de pruebas y corrección de defectos |  | 22d | 2026-11-16 | 2026-12-16 | 27SS+10d | Lukas Rozas [22.16%]; Mauricio Aliaga [3.98%]; Nicolás González [4.55%] | false |
| 29 | 5.3 | 4.3 Pruebas de aceptación con el cliente (piloto) |  | 7d | 2026-12-02 | 2026-12-11 | 13FS+7d, 15FS+7d, 17FS+2d, 21FS+2d, 25FS+2d | Lukas Rozas [25%]; Fabián Moore [17.86%]; Mauricio Aliaga [23.21%]; Nicolás González [5.36%] | false |
| 30 | 6 | **5 Implementación y cierre** |  | 17d | 2026-11-25 | 2026-12-18 |  |  | false |
| 31 | 6.1 | 5.1 Despliegue en el ambiente del cliente (con soporte TI) |  | 10d | 2026-11-25 | 2026-12-09 | 13FS+2d | Nicolás González [25%]; Mauricio Aliaga [12.5%]; Lukas Rozas [2.5%] | false |
| 32 | 6.2 | 5.2 Capacitación y manual de usuario |  | 7d | 2026-12-02 | 2026-12-11 | 29SS | Fabián Moore [30.36%]; Mauricio Aliaga [17.86%]; Nicolás González [23.21%]; Lukas Rozas [3.57%] | false |
| 33 | 6.3 | 5.3 Cierre y aceptación final |  | 5d | 2026-12-14 | 2026-12-18 | 28FF+2d, 29, 32 | Fabián Moore [45%]; Nicolás González [30%]; Mauricio Aliaga [47.5%]; Lukas Rozas [27.5%] | false |
| 34 | 7 | Hito 1. Incremento 1 (Evaluación N°3): acceso por rol y recomendaciones | milestone | 0d | 2026-11-06 | 2026-11-06 | 11FF-1d, 16FF-1d, 19FF-1d, 23FF-1d |  | false |
| 35 | 8 | Hito 2. Reservas y formulario aprobados (OE1, OE2) | milestone | 0d | 2026-11-20 | 2026-11-20 | 13FF-1d, 15FF-1d |  | false |
| 36 | 9 | Hito 3. Seguimiento y seguridad aprobados (OE3, OE4) | milestone | 0d | 2026-11-27 | 2026-11-27 | 17FF-1d, 21FF-1d, 25FF-1d |  | false |
| 37 | 10 | Hito 4. Dashboard aprobado (OE5) | milestone | 0d | 2026-12-04 | 2026-12-04 | 24FF-1d |  | false |
| 38 | 11 | Hito 5. Pruebas, piloto y capacitación concluidos (OE6, OE7) | milestone | 0d | 2026-12-11 | 2026-12-11 | 29FF-1d, 32FF-1d |  | false |
| 39 | 12 | Hito 6. Cierre y aceptación final del proyecto | milestone | 0d | 2026-12-18 | 2026-12-18 | 33FF-1d |  | false |
